Schedule from MS Project, 2025-03-10 to 2025-08-11.

## Calendars

- NUEVO: Mon-Fri 08:00-12:00, 13:00-17:00; Sat-Sun off. Exceptions (off unless hours are given): 2025-03-19 (San José), 2025-04-17 (Jueves Santo), 2025-04-18 (Viernes Santo), 2025-04-19 (Sabado Santo), 2025-05-21 (Glorias Navales), 2025-06-19 (Pueblos Indigenas), 2025-07-16 (Virgen del Carmen).

## Resources

| Resource | Cost per use |
| --- | --- |
| Cisco Catalyst 9500 | 2176328 |
| Catalyst C9300-48P-A | 1470059 |
| Panel Panduit Adaptador de Fibra de 12 puertos (LC, OM3) | 72600 |
| Jumper LC/LC Multimodo OM3 Duplex Celeste 1m | 2390 |
| Fibra Óptica Multimodo Exterior 24 Fibras OM3 LSZH | 1760 |
| FIBRA OPTICA 24 FIBRAS MULTI OM3,LSZH INTERIOR | 5886 |
| Dell R440 | 1499900 |
| HPE DL360 G11 | 3900990 |

## Schedule

| ID | WBS | Task | Type | Duration | Start | Finish | Predecessors | Total slack | Constraint |
| --- | --- | --- | --- | --- | --- | --- | --- | --- | --- |
| 1 | 1 | **Inicio** |  | 43d | 2025-03-10 | 2025-05-12 |  |  |  |
| 2 | 1.1 | Levantamiento de requerimientos | manual | 5d | 2025-03-10 | 2025-03-14 |  |  | start no earlier than 2025-03-10 |
| 3 | 1.2 | Evaluación infraestructura actual | manual | 3d | 2025-03-17 | 2025-03-20 | 2 |  | start no earlier than 2025-03-17 |
| 4 | 1.3 | Identificación de riesgos preliminares | manual | 3d | 2025-03-21 | 2025-03-25 | 3 |  | start no earlier than 2025-03-21 |
| 5 | 1.4 | Aprobación del proyecto por la dirección | manual | 3d | 2025-03-26 | 2025-03-28 | 4 |  | start no earlier than 2025-03-26 |
| 6 | 1.5 | **Planificación del Proyecto** |  | 13d | 2025-03-31 | 2025-04-16 |  |  |  |
| 7 | 1.5.1 | Plan de alcance |  | 4d | 2025-03-31 | 2025-04-03 |  | 0d |  |
| 8 | 1.5.2 | Plan de adquisiciones |  | 2d | 2025-04-04 | 2025-04-07 | 7 | 0d |  |
| 9 | 1.5.3 | Plan de gestión de riesgos |  | 2d | 2025-04-08 | 2025-04-09 | 8 | 0d |  |
| 10 | 1.5.4 | Plan de implementación de la Ley 21.663 |  | 3d | 2025-04-10 | 2025-04-14 | 9 | 0d |  |
| 11 | 1.5.5 | Validación y cierre de planificación |  | 2d | 2025-04-15 | 2025-04-16 | 10 | 0d |  |
| 12 | 1.6 | **Adquisición de Equipos y Contratación** |  | 16d | 2025-04-17 | 2025-05-09 |  |  |  |
| 13 | 1.6.1 | Compra de switches |  | 3d | 2025-04-21 | 2025-04-23 | 11 | 0d |  |
| 14 | 1.6.2 | Compra de servidores |  | 3d | 2025-04-24 | 2025-04-28 | 13 | 0d |  |
| 15 | 1.6.3 | Compra de fibra OM3, SFP+, Patchpanel, Cables UTP CAT 6. |  | 4d | 2025-04-29 | 2025-05-02 | 14 | 0d |  |
| 16 | 1.6.4 | Contratación de técnicos e ingenieros externos |  | 2d | 2025-05-05 | 2025-05-06 | 15 | 0d |  |
| 17 | 1.6.5 | Recepción y prueba de equipos |  | 3d | 2025-05-07 | 2025-05-09 | 16 | 0d | finish no earlier than 2025-05-09 |
| 18 | 2 | **Ejecución** |  | 55d | 2025-05-12 | 2025-07-30 |  |  |  |
| 19 | 2.1 | **Instalación de infraestructura física** |  | 16d | 2025-05-12 | 2025-06-03 |  |  |  |
| 20 | 2.1.1 | Instalación racks piso 2 (sala central) |  | 3d | 2025-05-12 | 2025-05-14 | 17 | 0d | finish no earlier than 2025-04-16 |
| 21 | 2.1.2 | Instalación racks piso 3 |  | 3d | 2025-05-15 | 2025-05-19 | 20 | 0d |  |
| 22 | 2.1.3 | Instalación racks piso 1 |  | 3d | 2025-05-20 | 2025-05-23 | 21 | 0d |  |
| 23 | 2.1.4 | Canalización y tendido de fibra OM3 |  | 4d | 2025-05-26 | 2025-05-29 | 22 | 0d |  |
| 24 | 2.1.5 | Conexión SFP+ 10G entre switches y racks |  | 3d | 2025-05-30 | 2025-06-03 | 23 | 0d |  |

| ID | WBS | Task | Type | Duration | Start | Finish | Predecessors | Total slack |
| --- | --- | --- | --- | --- | --- | --- | --- | --- |
| 25 | 2.2 | **Configuración de red** |  | 11d | 2025-06-04 | 2025-06-18 |  |  |
| 26 | 2.2.1 | Instalación de switches de distribución |  | 3d | 2025-06-04 | 2025-06-06 | 24 | 0d |
| 27 | 2.2.2 | Configuración de VLANs, trunking y balanceo |  | 4d | 2025-06-09 | 2025-06-12 | 26 | 0d |
| 28 | 2.2.3 | Conexión a ISP primario y Starlink |  | 2d | 2025-06-13 | 2025-06-16 | 27 | 0d |
| 29 | 2.2.4 | Configuración enrutamiento dual | manual | 2d | 2025-06-17 | 2025-06-18 | 28 |  |
| 30 | 2.3 | **Instalación de servidores** |  | 9d | 2025-06-19 | 2025-07-01 |  |  |
| 31 | 2.3.1 | Instalación servidor Syslog/DHCP |  | 3d | 2025-06-20 | 2025-06-24 | 29 | 0d |
| 32 | 2.3.2 | Instalación servidor IPS |  | 3d | 2025-06-25 | 2025-06-27 | 31 | 0d |
| 33 | 2.3.3 | Pruebas de comunicación y alertas |  | 2d | 2025-06-30 | 2025-07-01 | 32 | 0d |
| 34 | 2.4 | **Implementación Ley 21.663** |  | 19d | 2025-07-02 | 2025-07-29 |  |  |
| 35 | 2.4.1 | Evaluación del estado actual de la gestión de ciberseguridad |  | 2d | 2025-07-02 | 2025-07-03 | 33 | 0d |
| 36 | 2.4.2 | Designación responsable ciberseguridad (CISO) |  | 3d | 2025-07-04 | 2025-07-08 | 35 | 0d |
| 37 | 2.4.3 | Implementación de análisis de riesgos |  | 3d | 2025-07-09 | 2025-07-11 | 36 | 0d |
| 38 | 2.4.4 | Implementación de bitácoras/logs |  | 3d | 2025-07-14 | 2025-07-17 | 37 | 0d |
| 39 | 2.4.5 | Plan de continuidad operacional |  | 3d | 2025-07-18 | 2025-07-22 | 38 | 0d |
| 40 | 2.4.6 | Capacitación al personal interno |  | 2d | 2025-07-23 | 2025-07-24 | 39 | 0d |
| 41 | 2.4.7 | Prueba de respuesta a incidentes |  | 2d | 2025-07-25 | 2025-07-28 | 40 | 0d |
| 42 | 2.4.8 | Establecer formato de Reporte a CSIRT |  | 1d | 2025-07-29 | 2025-07-29 | 41 | 0d |
| 43 | 3 | **Cierre del Proyecto** |  | 9d | 2025-07-30 | 2025-08-11 |  |  |
| 44 | 3.1 | Documentación de red y seguridad |  | 2d | 2025-07-30 | 2025-07-31 | 42 | 0d |
| 45 | 3.2 | Validación con usuarios clave |  | 3d | 2025-08-01 | 2025-08-05 | 44 | 0d |
| 46 | 3.3 | Informe Cumplimiento de la Ley |  | 3d | 2025-08-06 | 2025-08-08 | 45 | 0d |
| 47 | 3.4 | Formalizar el cierre administrativo mediante acta de término firmada por el área de TI y dirección de administración municipal. |  | 1d | 2025-08-11 | 2025-08-11 | 46 | 0d |
